# PetCare MVP

Schedule from ProjectLibre, 2026-03-16 to 2026-04-30.

## Calendars

- Anthony Alejandro Gonzalez: Mon-Fri 08:00-12:00, 13:00-17:00; Sat-Sun off.

## Resources

| Resource |
| --- |
| Unassigned |
| Equipo |
| Harold Ricardo Alvarado |
| Andres Santiago Daza |
| Juan Jose Forero |
| Anthony Alejandro Gonzalez |

## Schedule

| ID | WBS | Task | Duration | Start | Finish | Predecessors | Resources |
| --- | --- | --- | --- | --- | --- | --- | --- |
| 1 | 1 | **PetCare MVP** | 33.5d | 2026-03-16 08:00 | 2026-04-30 13:00 |  |  |
| 2 | 1.1 | **Sprint 1 (15 Mar - 29 Mar 2026)** | 9.88d | 2026-03-16 08:00 | 2026-03-27 16:00 |  |  |
| 3 | 1.1.1 | **PLAN - Actividades de planeacion del sprint** | 0.38d | 2026-03-16 08:00 | 2026-03-16 11:00 |  |  |
| 4 | 1.1.1.1 | [T1] Sprint Planning S1 - Revision del Product Backlog y seleccion de items del sprint | 0.25d | 2026-03-16 08:00 | 2026-03-16 10:00 |  | Equipo |
| 5 | 1.1.1.2 | [T2] Sprint Planning S1 - Definicion del Sprint Goal y asignacion de tareas al equipo | 0.12d | 2026-03-16 10:00 | 2026-03-16 11:00 | 4 | Equipo |
| 6 | 1.1.2 | **HU-01 - Como usuario quiero registrarme en la plataforma** | 1.88d | 2026-03-16 11:00 | 2026-03-18 10:00 |  |  |
| 7 | 1.1.2.1 | [T3] Crear proyecto Firebase, configurar acceso a la consola, y habilitar Firebase Authentication | 0.62d | 2026-03-16 11:00 | 2026-03-16 17:00 | 5 | Harold Ricardo Alvarado |
| 8 | 1.1.2.2 | [T4] Disenar prototipo de UI de formulario de registro | 0.5d | 2026-03-16 11:00 | 2026-03-16 16:00 | 5 | Andres Santiago Daza |
| 9 | 1.1.2.3 | [T7] Implementar formulario de registro y creacion de cuenta en Firebase Auth | 0.88d | 2026-03-17 08:00 | 2026-03-17 16:00 | 7, 8, 12 | Juan Jose Forero |
| 10 | 1.1.2.4 | [T8] Probar registro de usuarios | 0.38d | 2026-03-17 16:00 | 2026-03-18 10:00 | 9, 13 | Anthony Alejandro Gonzalez |
| 11 | 1.1.3 | **HU-02 - Como usuario quiero iniciar sesion con mi correo y contrasena** | 2.75d | 2026-03-16 11:00 | 2026-03-19 09:00 |  |  |
| 12 | 1.1.3.1 | [T5] Disenar prototipo de UI de formulario de inicio de sesion | 0.5d | 2026-03-16 11:00 | 2026-03-16 16:00 | 5 | Juan Jose Forero |
| 13 | 1.1.3.2 | [T6] Disenar prototipo de UI de pagina de inicio | 0.5d | 2026-03-16 11:00 | 2026-03-16 16:00 | 5 | Anthony Alejandro Gonzalez |
| 14 | 1.1.3.3 | [T9] Implementar formulario de inicio de sesion y autenticacion con Firebase | 1d | 2026-03-16 16:00 | 2026-03-17 16:00 | 8, 12 | Andres Santiago Daza |
| 15 | 1.1.3.4 | [T10] Implementar pagina de inicio | 0.88d | 2026-03-17 16:00 | 2026-03-18 15:00 | 9, 13, 14 | Juan Jose Forero |
| 16 | 1.1.3.5 | [T11] Probar inicio de sesion y acceso a pagina de inicio | 0.38d | 2026-03-18 15:00 | 2026-03-19 09:00 | 10, 15 | Anthony Alejandro Gonzalez |
| 17 | 1.1.4 | **HU-08 - Como proveedor quiero crear y editar mi perfil profesional** | 5d | 2026-03-17 08:00 | 2026-03-23 17:00 |  |  |
| 18 | 1.1.4.1 | [T12] Disenar modelado de datos de perfiles profesionales | 0.62d | 2026-03-17 08:00 | 2026-03-17 14:00 | 7 | Harold Ricardo Alvarado |
| 19 | 1.1.4.2 | [T13] Implementar DB perfiles profesionales | 0.5d | 2026-03-17 14:00 | 2026-03-18 09:00 | 18 | Harold Ricardo Alvarado |
| 20 | 1.1.4.3 | [T14] Disenar UI para formulario de creacion y edicion de perfil profesional | 0.5d | 2026-03-18 15:00 | 2026-03-19 10:00 | 15 | Juan Jose Forero |
| 21 | 1.1.4.4 | [T15] Implementar formulario de creacion y edicion de perfil profesional | 0.88d | 2026-03-19 10:00 | 2026-03-20 09:00 | 14, 20 | Andres Santiago Daza |
| 22 | 1.1.4.5 | [T16] Implementar endpoints de creacion y edicion de perfiles profesionales | 1.25d | 2026-03-18 09:00 | 2026-03-19 11:00 | 19 | Harold Ricardo Alvarado |
| 23 | 1.1.4.6 | [T17] Integrar llamadas a endpoints al crear/editar perfil profesional | 0.62d | 2026-03-20 09:00 | 2026-03-20 15:00 | 21, 22 | Andres Santiago Daza |
| 24 | 1.1.4.7 | [T18] Implementar despliegue de desarrollo para pruebas (HU-08) | 0.75d | 2026-03-20 15:00 | 2026-03-23 13:00 | 22, 23 | Harold Ricardo Alvarado |
| 25 | 1.1.4.8 | [T19] Ejecutar pruebas unitarias y de integracion (HU-08) | 0.5d | 2026-03-23 13:00 | 2026-03-23 17:00 | 16, 24 | Anthony Alejandro Gonzalez |

Notes:
- 2: 15 Mar - 29 Mar 2026
- 4: Owner: Equipo / Hrs originales: 2
- 5: Owner: Equipo / Hrs originales: 1
- 7: Owner: Harold Ricardo Alvarado / Hrs originales: 5
- 8: Owner: Andres Santiago Daza / Hrs originales: 4
- 9: Owner: Juan Jose Forero / Hrs originales: 7
- 10: Owner: Anthony Alejandro Gonzalez / Hrs originales: 3
- 12: Owner: Juan Jose Forero / Hrs originales: 4
- 13: Owner: Anthony Alejandro Gonzalez / Hrs originales: 4
- 14: Owner: Andres Santiago Daza / Hrs originales: 8
- 15: Owner: Juan Jose Forero / Hrs originales: 7
- 16: Owner: Anthony Alejandro Gonzalez / Hrs originales: 3
- 18: Owner: Harold Ricardo Alvarado / Hrs originales: 5
- 19: Owner: Harold Ricardo Alvarado / Hrs originales: 4
- 20: Owner: Juan Jose Forero / Hrs originales: 4
- 21: Owner: Andres Santiago Daza / Hrs originales: 7
- 22: Owner: Harold Ricardo Alvarado / Hrs originales: 10
- 23: Owner: Andres Santiago Daza / Hrs originales: 5
- 24: Owner: Harold Ricardo Alvarado / Hrs originales: 6
- 25: Owner: Anthony Alejandro Gonzalez / Hrs originales: 4

| ID | WBS | Task | Duration | Start | Finish | Predecessors | Constraint | Resources |
| --- | --- | --- | --- | --- | --- | --- | --- | --- |
| 26 | 1.1.5 | **HU-07 - Como dueno de mascotas quiero crear y/o editar el perfil de mis mascotas** | 3.5d | 2026-03-23 13:00 | 2026-03-26 17:00 |  |  |  |
| 27 | 1.1.5.1 | [T20] Disenar modelado de datos de perfiles de mascotas | 0.62d | 2026-03-23 13:00 | 2026-03-24 09:00 | 24 |  | Harold Ricardo Alvarado |
| 28 | 1.1.5.2 | [T21] Implementar modelos de datos en la DB (perfiles mascotas) | 0.5d | 2026-03-24 09:00 | 2026-03-24 14:00 | 27 |  | Harold Ricardo Alvarado |
| 29 | 1.1.5.3 | [T22] Disenar UI para formulario de creacion y edicion de perfil de mascota | 0.5d | 2026-03-24 08:00 | 2026-03-24 13:00 | 25 |  | Anthony Alejandro Gonzalez |
| 30 | 1.1.5.4 | [T23] Implementar formulario de creacion y edicion de perfil de mascota | 0.5d | 2026-03-24 13:00 | 2026-03-24 17:00 | 20, 29 |  | Juan Jose Forero |
| 31 | 1.1.5.5 | [T24] Implementar endpoints de creacion y edicion de perfiles de mascotas | 0.75d | 2026-03-24 14:00 | 2026-03-25 11:00 | 28 |  | Harold Ricardo Alvarado |
| 32 | 1.1.5.6 | [T25] Integrar llamadas a endpoints al crear/editar perfil de mascota | 0.62d | 2026-03-25 11:00 | 2026-03-25 17:00 | 30, 31 |  | Juan Jose Forero |
| 33 | 1.1.5.7 | [T26] Implementar despliegue de desarrollo para pruebas (HU-07) | 0.5d | 2026-03-26 08:00 | 2026-03-26 13:00 | 31, 32 |  | Harold Ricardo Alvarado |
| 34 | 1.1.5.8 | [T27] Ejecutar pruebas unitarias y de integracion (HU-07) | 0.5d | 2026-03-26 13:00 | 2026-03-26 17:00 | 23, 33 |  | Andres Santiago Daza |
| 35 | 1.1.6 | **REUNIONES - Reuniones del sprint** | 9d | 2026-03-16 11:00 | 2026-03-27 11:00 |  |  |  |
| 36 | 1.1.6.1 | [T28] Daily Standups Sprint 1 (15 reuniones de seguimiento diario) | 0.5d | 2026-03-16 11:00 | 2026-03-16 16:00 | 5 |  | Equipo |
| 37 | 1.1.6.2 | [T29] Sprint Review Sprint 1 - Demostracion del incremento a stakeholders | 0.19d | 2026-03-27 08:00 | 2026-03-27 09:30 | 10, 16, 25, 34, 36 |  | Equipo |
| 38 | 1.1.6.3 | [T30] Sprint Retrospective Sprint 1 - Analisis del proceso y propuesta de mejoras | 0.19d | 2026-03-27 09:30 | 2026-03-27 11:00 | 37 |  | Equipo |
| 39 | 1.1.7 | **CIERRE - Actividades de cierre del sprint** | 0.12d | 2026-03-27 15:00 | 2026-03-27 16:00 |  |  |  |
| 40 | 1.1.7.1 | [T31] Identificacion de lecciones aprendidas y cierre Sprint 1 | 0.12d | 2026-03-27 15:00 | 2026-03-27 16:00 | 38 | start no earlier than 2026-03-27 15:00 | Equipo |
| 41 | 1.2 | **Sprint 2 (29 Mar - 12 Abr 2026)** | 9.81d | 2026-03-30 08:00 | 2026-04-10 15:30 | 2 | start no earlier than 2026-03-29 08:00 |  |
| 42 | 1.2.1 | **PLAN - Actividades de planeacion del sprint** | 0.38d | 2026-03-30 08:00 | 2026-03-30 11:00 |  | start no earlier than 2026-03-29 13:30 |  |
| 43 | 1.2.1.1 | [T32] Sprint Planning S2 - Revision del Product Backlog y seleccion de items del sprint | 0.25d | 2026-03-30 08:00 | 2026-03-30 10:00 |  |  | Equipo |
| 44 | 1.2.1.2 | [T33] Sprint Planning S2 - Definicion del Sprint Goal y asignacion de tareas al equipo | 0.12d | 2026-03-30 10:00 | 2026-03-30 11:00 | 43 |  | Equipo |
| 45 | 1.2.2 | **HU-05 - Como proveedor quiero publicar un nuevo servicio** | 3.38d | 2026-03-30 11:00 | 2026-04-02 15:00 |  |  |  |
| 46 | 1.2.2.1 | [T34] Disenar modelado de datos de servicios e implementar coleccion en la DB | 0.62d | 2026-03-30 11:00 | 2026-03-30 17:00 | 44 |  | Harold Ricardo Alvarado |
| 47 | 1.2.2.2 | [T35] Disenar prototipo UI de formulario de creacion de servicio | 0.5d | 2026-03-30 11:00 | 2026-03-30 16:00 | 44 |  | Andres Santiago Daza |
| 48 | 1.2.2.3 | [T36] Implementar endpoints para la creacion de servicios | 0.88d | 2026-03-31 08:00 | 2026-03-31 16:00 | 46 |  | Harold Ricardo Alvarado |
| 49 | 1.2.2.4 | [T37] Implementar formulario de creacion de servicios con llamados a la API | 0.88d | 2026-03-31 16:00 | 2026-04-01 15:00 | 47, 48, 53 |  | Juan Jose Forero |
| 50 | 1.2.2.5 | [T38] Implementar despliegue de desarrollo para pruebas (HU-05) | 0.5d | 2026-04-01 15:00 | 2026-04-02 10:00 | 48, 49 |  | Harold Ricardo Alvarado |
| 51 | 1.2.2.6 | [T39] Ejecutar pruebas unitarias y de integracion (HU-05) | 0.5d | 2026-04-02 10:00 | 2026-04-02 15:00 | 50 |  | Anthony Alejandro Gonzalez |

Notes:
- 27: Owner: Harold Ricardo Alvarado / Hrs originales: 5
- 28: Owner: Harold Ricardo Alvarado / Hrs originales: 4
- 29: Owner: Anthony Alejandro Gonzalez / Hrs originales: 4
- 30: Owner: Juan Jose Forero / Hrs originales: 7
- 31: Owner: Harold Ricardo Alvarado / Hrs originales: 10
- 32: Owner: Juan Jose Forero / Hrs originales: 5
- 33: Owner: Harold Ricardo Alvarado / Hrs originales: 6
- 34: Owner: Andres Santiago Daza / Hrs originales: 4
- 36: Owner: Equipo / Hrs originales: 5
- 37: Owner: Equipo / Hrs originales: 2
- 38: Owner: Equipo / Hrs originales: 1.5
- 40: Owner: Equipo / Hrs originales: 1
- 41: 29 Mar - 12 Abr 2026
- 43: Owner: Equipo / Hrs originales: 2
- 44: Owner: Equipo / Hrs originales: 1
- 46: Owner: Harold Ricardo Alvarado / Hrs originales: 5
- 47: Owner: Andres Santiago Daza / Hrs originales: 4
- 48: Owner: Harold Ricardo Alvarado / Hrs originales: 7
- 49: Owner: Juan Jose Forero / Hrs originales: 7
- 50: Owner: Harold Ricardo Alvarado / Hrs originales: 4
- 51: Owner: Anthony Alejandro Gonzalez / Hrs originales: 4

| ID | WBS | Task | Duration | Start | Finish | Predecessors | Resources |
| --- | --- | --- | --- | --- | --- | --- | --- |
| 52 | 1.2.3 | **HU-04 - Como usuario quiero ver el listado de servicios disponibles** | 5.12d | 2026-03-30 11:00 | 2026-04-06 13:00 |  |  |
| 53 | 1.2.3.1 | [T40] Disenar prototipo de UI de pagina de visualizacion de servicios | 0.62d | 2026-03-30 11:00 | 2026-03-30 17:00 | 44 | Juan Jose Forero |
| 54 | 1.2.3.2 | [T41] Implementar endpoints para obtener listado de servicios y detalle | 0.62d | 2026-04-02 10:00 | 2026-04-02 16:00 | 50 | Harold Ricardo Alvarado |
| 55 | 1.2.3.3 | [T42] Implementar paginas para la visualizacion de servicios | 0.62d | 2026-04-02 16:00 | 2026-04-03 13:00 | 51, 53, 54 | Anthony Alejandro Gonzalez |
| 56 | 1.2.3.4 | [T43] Implementar despliegue de desarrollo para pruebas (HU-04) | 0.5d | 2026-04-03 13:00 | 2026-04-03 17:00 | 54, 55 | Harold Ricardo Alvarado |
| 57 | 1.2.3.5 | [T44] Ejecutar pruebas unitarias y de integracion (HU-04) | 0.5d | 2026-04-06 08:00 | 2026-04-06 13:00 | 49, 56 | Juan Jose Forero |
| 58 | 1.2.4 | **HU-06 - Como proveedor quiero gestionar la informacion de los servicios publicados** | 6.38d | 2026-03-30 16:00 | 2026-04-08 10:00 |  |  |
| 59 | 1.2.4.1 | [T45] Disenar UI para la pagina de administracion de servicios | 0.62d | 2026-03-30 16:00 | 2026-03-31 13:00 | 47 | Andres Santiago Daza |
| 60 | 1.2.4.2 | [T46] Implementar endpoints para obtener informacion y editar servicios del proveedor | 0.62d | 2026-04-06 08:00 | 2026-04-06 14:00 | 56 | Harold Ricardo Alvarado |
| 61 | 1.2.4.3 | [T47] Implementar pagina de administracion de servicios con llamados a la API | 0.62d | 2026-04-06 14:00 | 2026-04-07 10:00 | 55, 59, 60 | Anthony Alejandro Gonzalez |
| 62 | 1.2.4.4 | [T48] Implementar despliegue de desarrollo para pruebas (HU-06) | 0.5d | 2026-04-07 10:00 | 2026-04-07 15:00 | 60, 61 | Harold Ricardo Alvarado |
| 63 | 1.2.4.5 | [T49] Ejecutar pruebas unitarias y de integracion (HU-06) | 0.5d | 2026-04-07 15:00 | 2026-04-08 10:00 | 57, 62 | Juan Jose Forero |
| 64 | 1.2.5 | **HU-09 - Como usuario quiero ver el perfil completo de cada proveedor** | 7.75d | 2026-03-31 13:00 | 2026-04-10 10:00 |  |  |
| 65 | 1.2.5.1 | [T50] Disenar UI de la pagina de perfil profesional (publico) | 0.62d | 2026-03-31 13:00 | 2026-04-01 09:00 | 59 | Andres Santiago Daza |
| 66 | 1.2.5.2 | [T51] Implementar endpoints para obtener informacion del perfil profesional | 0.88d | 2026-04-07 15:00 | 2026-04-08 14:00 | 62 | Harold Ricardo Alvarado |
| 67 | 1.2.5.3 | [T52] Implementar pagina de perfil profesional con llamados a la API | 0.62d | 2026-04-08 14:00 | 2026-04-09 10:00 | 61, 65, 66 | Anthony Alejandro Gonzalez |
| 68 | 1.2.5.4 | [T53] Implementar despliegue de desarrollo para pruebas (HU-09) | 0.5d | 2026-04-09 10:00 | 2026-04-09 15:00 | 66, 67 | Harold Ricardo Alvarado |
| 69 | 1.2.5.5 | [T54] Ejecutar pruebas unitarias y de integracion (HU-09) | 0.5d | 2026-04-09 15:00 | 2026-04-10 10:00 | 65, 68 | Andres Santiago Daza |
| 70 | 1.2.6 | **REUNIONES - Reuniones del sprint** | 9.31d | 2026-03-30 11:00 | 2026-04-10 14:30 |  |  |
| 71 | 1.2.6.1 | [T55] Daily Standups Sprint 2 (15 reuniones de seguimiento diario) | 0.62d | 2026-03-30 11:00 | 2026-03-30 17:00 | 44 | Equipo |
| 72 | 1.2.6.2 | [T56] Sprint Review Sprint 2 - Demostracion del incremento a stakeholders | 0.25d | 2026-04-10 10:00 | 2026-04-10 13:00 | 51, 57, 63, 69, 71 | Equipo |
| 73 | 1.2.6.3 | [T57] Sprint Retrospective Sprint 2 - Analisis del proceso y propuesta de mejoras | 0.19d | 2026-04-10 13:00 | 2026-04-10 14:30 | 72 | Equipo |
| 74 | 1.2.7 | **CIERRE - Actividades de cierre del sprint** | 0.12d | 2026-04-10 14:30 | 2026-04-10 15:30 |  |  |
| 75 | 1.2.7.1 | [T58] Identificacion de lecciones aprendidas y cierre Sprint 2 | 0.12d | 2026-04-10 14:30 | 2026-04-10 15:30 | 73 | Equipo |

Notes:
- 53: Owner: Juan Jose Forero / Hrs originales: 5
- 54: Owner: Harold Ricardo Alvarado / Hrs originales: 7
- 55: Owner: Anthony Alejandro Gonzalez / Hrs originales: 9
- 56: Owner: Harold Ricardo Alvarado / Hrs originales: 4
- 57: Owner: Juan Jose Forero / Hrs originales: 4
- 59: Owner: Andres Santiago Daza / Hrs originales: 5
- 60: Owner: Harold Ricardo Alvarado / Hrs originales: 10
- 61: Owner: Anthony Alejandro Gonzalez / Hrs originales: 10
- 62: Owner: Harold Ricardo Alvarado / Hrs originales: 4
- 63: Owner: Juan Jose Forero / Hrs originales: 4
- 65: Owner: Andres Santiago Daza / Hrs originales: 5
- 66: Owner: Harold Ricardo Alvarado / Hrs originales: 7
- 67: Owner: Anthony Alejandro Gonzalez / Hrs originales: 8
- 68: Owner: Harold Ricardo Alvarado / Hrs originales: 4
- 69: Owner: Andres Santiago Daza / Hrs originales: 4
- 71: Owner: Equipo / Hrs originales: 5
- 72: Owner: Equipo / Hrs originales: 2
- 73: Owner: Equipo / Hrs originales: 1.5
- 75: Owner: Equipo / Hrs originales: 1

| ID | WBS | Task | Duration | Start | Finish | Predecessors | Constraint | Resources |
| --- | --- | --- | --- | --- | --- | --- | --- | --- |
| 76 | 1.3 | **Sprint 3 (12 Abr - 26 Abr 2026)** | 7.44d | 2026-04-13 08:00 | 2026-04-22 11:30 | 41 | start no earlier than 2026-04-12 10:30 |  |
| 77 | 1.3.1 | **PLAN - Actividades de planeacion del sprint** | 0.25d | 2026-04-13 08:00 | 2026-04-13 10:00 |  | start no earlier than 2026-04-12 10:30 |  |
| 78 | 1.3.1.1 | [T59] Sprint Planning S3 - Revision del Product Backlog y seleccion de items del sprint | 0.12d | 2026-04-13 08:00 | 2026-04-13 09:00 |  |  | Equipo |
| 79 | 1.3.1.2 | [T60] Sprint Planning S3 - Definicion del Sprint Goal y asignacion de tareas al equipo | 0.12d | 2026-04-13 09:00 | 2026-04-13 10:00 | 78 |  | Equipo |
| 80 | 1.3.2 | **HU-10 - Como usuario quiero solicitar un servicio a un proveedor** | 1.5d | 2026-04-13 10:00 | 2026-04-14 15:00 |  |  |  |
| 81 | 1.3.2.1 | [T61] Disenar modelado de datos de solicitudes e implementar coleccion en la DB | 0.25d | 2026-04-13 10:00 | 2026-04-13 13:00 | 79 |  | Harold Ricardo Alvarado |
| 82 | 1.3.2.2 | [T62] Disenar prototipo UI de paneles para clientes y proveedores | 0.25d | 2026-04-13 10:00 | 2026-04-13 13:00 | 79 |  | Andres Santiago Daza |
| 83 | 1.3.2.3 | [T63] Implementar endpoints para crear solicitud con pruebas y documentacion | 0.25d | 2026-04-13 13:00 | 2026-04-13 15:00 | 81 |  | Harold Ricardo Alvarado |
| 84 | 1.3.2.4 | [T64] Implementar Web Sockets para notificaciones de solicitudes | 0.12d | 2026-04-13 15:00 | 2026-04-13 16:00 | 83 |  | Harold Ricardo Alvarado |
| 85 | 1.3.2.5 | [T65] Implementar paneles y formulario de solicitud con llamados a la API | 0.12d | 2026-04-13 16:00 | 2026-04-13 17:00 | 82, 83, 84, 89 |  | Juan Jose Forero |
| 86 | 1.3.2.6 | [T66] Implementar despliegue de desarrollo para pruebas (HU-10) | 0.5d | 2026-04-14 08:00 | 2026-04-14 13:00 | 84, 85 |  | Harold Ricardo Alvarado |
| 87 | 1.3.2.7 | [T67] Ejecutar pruebas unitarias y de integracion (HU-10) | 0.25d | 2026-04-14 13:00 | 2026-04-14 15:00 | 86 |  | Anthony Alejandro Gonzalez |
| 88 | 1.3.3 | **HU-11 - Como proveedor quiero ver aceptar o rechazar solicitudes de servicio** | 3d | 2026-04-13 10:00 | 2026-04-16 10:00 |  |  |  |
| 89 | 1.3.3.1 | [T68] Disenar prototipo de UI de componentes de gestion de solicitudes | 0.62d | 2026-04-13 10:00 | 2026-04-13 16:00 | 79 |  | Juan Jose Forero |
| 90 | 1.3.3.2 | [T69] Implementar endpoints para cambiar estado de solicitud y notificaciones | 0.25d | 2026-04-14 13:00 | 2026-04-14 15:00 | 86 |  | Harold Ricardo Alvarado |
| 91 | 1.3.3.3 | [T70] Implementar componentes de gestion de solicitudes con llamados a la API | 0.62d | 2026-04-14 15:00 | 2026-04-15 11:00 | 87, 89, 90 |  | Anthony Alejandro Gonzalez |
| 92 | 1.3.3.4 | [T71] Implementar despliegue de desarrollo para pruebas (HU-11) | 0.5d | 2026-04-15 11:00 | 2026-04-15 16:00 | 90, 91 |  | Harold Ricardo Alvarado |
| 93 | 1.3.3.5 | [T72] Ejecutar pruebas unitarias y de integracion (HU-11) | 0.38d | 2026-04-15 16:00 | 2026-04-16 10:00 | 85, 92 |  | Juan Jose Forero |
| 94 | 1.3.4 | **HU-12 - Como usuario quiero calificar y dejar una resena sobre el servicio** | 3d | 2026-04-13 13:00 | 2026-04-16 13:00 |  |  |  |
| 95 | 1.3.4.1 | [T73] Disenar UI de formulario de resena | 0.25d | 2026-04-13 13:00 | 2026-04-13 15:00 | 82 | start no earlier than 1970-01-01 00:00 | Andres Santiago Daza |
| 96 | 1.3.4.2 | [T74] Implementar endpoints para creacion de resenas con documentacion | 0.25d | 2026-04-15 16:00 | 2026-04-16 09:00 | 92 |  | Harold Ricardo Alvarado |
| 97 | 1.3.4.3 | [T75] Implementar formulario de creacion de resenas con llamados a la API | 0.12d | 2026-04-16 09:00 | 2026-04-16 10:00 | 91, 95, 96 |  | Anthony Alejandro Gonzalez |
| 98 | 1.3.4.4 | [T76] Implementar despliegue de desarrollo para pruebas (HU-12) | 0.12d | 2026-04-16 10:00 | 2026-04-16 11:00 | 96, 97 |  | Harold Ricardo Alvarado |
| 99 | 1.3.4.5 | [T77] Ejecutar pruebas unitarias y de integracion (HU-12) | 0.12d | 2026-04-16 11:00 | 2026-04-16 13:00 | 93, 98 |  | Juan Jose Forero |

Notes:
- 76: 12 Abr - 26 Abr 2026
- 78: Owner: Equipo / Hrs originales: 2
- 79: Owner: Equipo / Hrs originales: 1
- 81: Owner: Harold Ricardo Alvarado / Hrs originales: 5
- 82: Owner: Andres Santiago Daza / Hrs originales: 4
- 83: Owner: Harold Ricardo Alvarado / Hrs originales: 7
- 84: Owner: Harold Ricardo Alvarado / Hrs originales: 5
- 85: Owner: Juan Jose Forero / Hrs originales: 10
- 86: Owner: Harold Ricardo Alvarado / Hrs originales: 4
- 87: Owner: Anthony Alejandro Gonzalez / Hrs originales: 4
- 89: Owner: Juan Jose Forero / Hrs originales: 5
- 90: Owner: Harold Ricardo Alvarado / Hrs originales: 7
- 91: Owner: Anthony Alejandro Gonzalez / Hrs originales: 9
- 92: Owner: Harold Ricardo Alvarado / Hrs originales: 4
- 93: Owner: Juan Jose Forero / Hrs originales: 4
- 95: Owner: Andres Santiago Daza / Hrs originales: 5
- 96: Owner: Harold Ricardo Alvarado / Hrs originales: 7
- 97: Owner: Anthony Alejandro Gonzalez / Hrs originales: 7
- 98: Owner: Harold Ricardo Alvarado / Hrs originales: 4
- 99: Owner: Juan Jose Forero / Hrs originales: 4

| ID | WBS | Task | Duration | Start | Finish | Predecessors | Constraint | Resources |
| --- | --- | --- | --- | --- | --- | --- | --- | --- |
| 100 | 1.3.5 | **HU-14 - Como proveedor quiero ver historial de servicios prestados y estadisticas** | 4d | 2026-04-13 15:00 | 2026-04-17 15:00 |  |  |  |
| 101 | 1.3.5.1 | [T78] Disenar UI seccion de historial de servicios de proveedor | 0.38d | 2026-04-13 15:00 | 2026-04-14 09:00 | 95 |  | Andres Santiago Daza |
| 102 | 1.3.5.2 | [T79] Implementar endpoints para obtener estadisticas de servicios realizados | 0.38d | 2026-04-16 11:00 | 2026-04-16 15:00 | 98 |  | Harold Ricardo Alvarado |
| 103 | 1.3.5.3 | [T80] Implementar seccion de historial de servicios de proveedor | 0.25d | 2026-04-16 15:00 | 2026-04-16 17:00 | 97, 101, 102 | start no earlier than 1970-01-01 00:00 | Anthony Alejandro Gonzalez |
| 104 | 1.3.5.4 | [T81] Implementar despliegue de desarrollo para pruebas (HU-14) | 0.5d | 2026-04-17 08:00 | 2026-04-17 13:00 | 102, 103 |  | Harold Ricardo Alvarado |
| 105 | 1.3.5.5 | [T82] Ejecutar pruebas unitarias y de integracion (HU-14) | 0.25d | 2026-04-17 13:00 | 2026-04-17 15:00 | 104 | start no earlier than 1970-01-01 00:00 | Andres Santiago Daza |
| 106 | 1.3.6 | **HU-13 - Como usuario quiero ver historial completo de servicios solicitados** | 2.38d | 2026-04-17 13:00 | 2026-04-21 16:00 |  |  |  |
| 107 | 1.3.6.1 | [T83] Disenar UI seccion de historial de servicios de cliente | 0.12d | 2026-04-17 15:00 | 2026-04-17 16:00 | 101, 105 |  | Andres Santiago Daza |
| 108 | 1.3.6.2 | [T84] Implementar endpoints para obtener estadisticas de servicios solicitados | 0.38d | 2026-04-17 13:00 | 2026-04-17 16:00 | 104 | start no earlier than 1970-01-01 00:00 | Harold Ricardo Alvarado |
| 109 | 1.3.6.3 | [T85] Implementar seccion de historial de servicios de cliente con llamados a la API | 1d | 2026-04-17 16:00 | 2026-04-20 16:00 | 103, 107, 108 |  | Anthony Alejandro Gonzalez |
| 110 | 1.3.6.4 | [T86] Implementar despliegue de desarrollo para pruebas (HU-13) | 0.5d | 2026-04-20 16:00 | 2026-04-21 11:00 | 108, 109 |  | Harold Ricardo Alvarado |
| 111 | 1.3.6.5 | [T87] Ejecutar pruebas unitarias y de integracion (HU-13) | 0.5d | 2026-04-21 11:00 | 2026-04-21 16:00 | 107, 110 |  | Andres Santiago Daza |
| 112 | 1.3.7 | **REUNIONES - Reuniones del sprint** | 7.06d | 2026-04-13 10:00 | 2026-04-22 10:30 |  |  |  |
| 113 | 1.3.7.1 | [T88] Daily Standups Sprint 3 (15 reuniones de seguimiento diario) | 0.62d | 2026-04-13 10:00 | 2026-04-13 16:00 | 79 | start no earlier than 1970-01-01 00:00 | Equipo |
| 114 | 1.3.7.2 | [T89] Sprint Review Sprint 3 - Demostracion del incremento a stakeholders | 0.25d | 2026-04-21 16:00 | 2026-04-22 09:00 | 87, 93, 99, 105, 111, 113 |  | Equipo |
| 115 | 1.3.7.3 | [T90] Sprint Retrospective Sprint 3 - Analisis del proceso y propuesta de mejoras | 0.19d | 2026-04-22 09:00 | 2026-04-22 10:30 | 114 |  | Equipo |
| 116 | 1.3.8 | **CIERRE - Actividades de cierre del sprint** | 0.12d | 2026-04-22 10:30 | 2026-04-22 11:30 |  |  |  |
| 117 | 1.3.8.1 | [T91] Identificacion de lecciones aprendidas y cierre Sprint 3 | 0.12d | 2026-04-22 10:30 | 2026-04-22 11:30 | 115 |  | Equipo |
| 118 | 1.4 | **Sprint 4 (26 Abr - 10 May 2026)** | 6.06d | 2026-04-22 11:30 | 2026-04-30 13:00 | 76 | start no earlier than 2026-04-06 10:00 |  |
| 119 | 1.4.1 | **PLAN - Actividades de planeacion del sprint** | 0.38d | 2026-04-22 11:30 | 2026-04-22 15:30 |  | start no earlier than 2026-04-01 13:00 |  |
| 120 | 1.4.1.1 | [T92] Sprint Planning S4 - Revision del Product Backlog y seleccion de items del sprint | 0.25d | 2026-04-22 11:30 | 2026-04-22 14:30 |  |  | Equipo |
| 121 | 1.4.1.2 | [T93] Sprint Planning S4 - Definicion del Sprint Goal y asignacion de tareas al equipo | 0.12d | 2026-04-22 14:30 | 2026-04-22 15:30 | 120 |  | Equipo |
| 122 | 1.4.2 | **HU-15 - Como administrador quiero ver dashboard con estadisticas generales de la plataforma** | 2.5d | 2026-04-22 15:30 | 2026-04-27 10:30 |  | start no later than 2026-02-11 08:00 |  |
| 123 | 1.4.2.1 | [T94] Disenar prototipo de UI de dashboard administrativo | 0.62d | 2026-04-22 15:30 | 2026-04-23 11:30 | 121 |  | Andres Santiago Daza |
| 124 | 1.4.2.2 | [T95] Implementar endpoints para obtener estadisticas de la plataforma | 0.38d | 2026-04-22 15:30 | 2026-04-23 09:30 | 121 |  | Harold Ricardo Alvarado |
| 125 | 1.4.2.3 | [T96] Implementar dashboard administrativo con llamados a la API | 0.88d | 2026-04-23 11:30 | 2026-04-24 10:30 | 123, 124, 129 | start no earlier than 2026-04-11 16:00 | Juan Jose Forero |
| 126 | 1.4.2.4 | [T97] Implementar despliegue de desarrollo para pruebas (HU-15) | 0.5d | 2026-04-24 10:30 | 2026-04-24 15:30 | 124, 125 |  | Harold Ricardo Alvarado |
| 127 | 1.4.2.5 | [T98] Ejecutar pruebas unitarias y de integracion (HU-15) | 0.5d | 2026-04-24 15:30 | 2026-04-27 10:30 | 126 |  | Anthony Alejandro Gonzalez |

Notes:
- 101: Owner: Andres Santiago Daza / Hrs originales: 5
- 102: Owner: Harold Ricardo Alvarado / Hrs originales: 7
- 103: Owner: Anthony Alejandro Gonzalez / Hrs originales: 9
- 104: Owner: Harold Ricardo Alvarado / Hrs originales: 4
- 105: Owner: Andres Santiago Daza / Hrs originales: 4
- 107: Owner: Andres Santiago Daza / Hrs originales: 5
- 108: Owner: Harold Ricardo Alvarado / Hrs originales: 7
- 109: Owner: Anthony Alejandro Gonzalez / Hrs originales: 9
- 110: Owner: Harold Ricardo Alvarado / Hrs originales: 4
- 111: Owner: Andres Santiago Daza / Hrs originales: 4
- 113: Owner: Equipo / Hrs originales: 5
- 114: Owner: Equipo / Hrs originales: 2
- 115: Owner: Equipo / Hrs originales: 1.5
- 117: Owner: Equipo / Hrs originales: 1
- 118: 26 Abr - 10 May 2026
- 120: Owner: Equipo / Hrs originales: 2
- 121: Owner: Equipo / Hrs originales: 1
- 123: Owner: Andres Santiago Daza / Hrs originales: 5
- 124: Owner: Harold Ricardo Alvarado / Hrs originales: 7
- 125: Owner: Juan Jose Forero / Hrs originales: 7
- 126: Owner: Harold Ricardo Alvarado / Hrs originales: 4
- 127: Owner: Anthony Alejandro Gonzalez / Hrs originales: 4

| ID | WBS | Task | Duration | Start | Finish | Predecessors | Constraint | Resources |
| --- | --- | --- | --- | --- | --- | --- | --- | --- |
| 128 | 1.4.3 | **HU-16 - Como administrador quiero ver listado de usuarios y poder desactivar cuentas** | 3.88d | 2026-04-22 15:30 | 2026-04-28 14:30 |  | start no earlier than 2026-04-11 10:00 |  |
| 129 | 1.4.3.1 | [T99] Disenar prototipo de UI de panel de gestion de usuarios | 0.62d | 2026-04-22 15:30 | 2026-04-23 11:30 | 121 |  | Juan Jose Forero |
| 130 | 1.4.3.2 | [T100] Implementar panel de gestion de usuarios | 0.88d | 2026-04-23 11:30 | 2026-04-24 10:30 | 123, 129 |  | Andres Santiago Daza |
| 131 | 1.4.3.3 | [T101] Implementar obtencion de informacion de usuarios y acciones con Firebase | 0.38d | 2026-04-27 10:30 | 2026-04-27 14:30 | 127, 130 |  | Anthony Alejandro Gonzalez |
| 132 | 1.4.3.4 | [T102] Implementar despliegue de desarrollo para pruebas (HU-16) | 0.5d | 2026-04-27 14:30 | 2026-04-28 09:30 | 126, 131 |  | Harold Ricardo Alvarado |
| 133 | 1.4.3.5 | [T103] Ejecutar pruebas unitarias y de integracion (HU-16) | 0.5d | 2026-04-28 09:30 | 2026-04-28 14:30 | 125, 132 |  | Juan Jose Forero |
| 134 | 1.4.4 | **HU-03 - Como usuario quiero recibir correo de recuperacion de contrasena** | 3.62d | 2026-04-24 10:30 | 2026-04-29 16:30 |  | start no earlier than 2026-04-11 10:00 |  |
| 135 | 1.4.4.1 | [T104] Disenar UI para formulario de recuperacion de contrasena | 0.25d | 2026-04-24 10:30 | 2026-04-24 13:30 | 130 |  | Andres Santiago Daza |
| 136 | 1.4.4.2 | [T105] Implementar formulario de recuperacion de contrasena | 0.25d | 2026-04-28 14:30 | 2026-04-28 16:30 | 133, 135 |  | Juan Jose Forero |
| 137 | 1.4.4.3 | [T106] Configurar e implementar envio de correo de recuperacion con Firebase | 0.38d | 2026-04-28 16:30 | 2026-04-29 10:30 | 131, 136 |  | Anthony Alejandro Gonzalez |
| 138 | 1.4.4.4 | [T107] Implementar despliegue de desarrollo para pruebas (HU-03) | 0.12d | 2026-04-29 10:30 | 2026-04-29 11:30 | 132, 137 |  | Harold Ricardo Alvarado |
| 139 | 1.4.4.5 | [T108] Ejecutar pruebas unitarias y de integracion (HU-03) | 0.5d | 2026-04-29 11:30 | 2026-04-29 16:30 | 135, 138 |  | Andres Santiago Daza |
| 140 | 1.4.5 | **REUNIONES - Reuniones del sprint** | 5.56d | 2026-04-22 15:30 | 2026-04-30 11:00 |  | start no earlier than 2026-04-11 10:00 |  |
| 141 | 1.4.5.1 | [T109] Daily Standups Sprint 4 (15 reuniones de seguimiento diario) | 0.25d | 2026-04-22 15:30 | 2026-04-23 08:30 | 121 |  | Equipo |
| 142 | 1.4.5.2 | [T110] Sprint Review Sprint 4 - Demostracion del incremento final a stakeholders | 0.25d | 2026-04-29 16:30 | 2026-04-30 09:30 | 127, 133, 139, 141 |  | Equipo |
| 143 | 1.4.5.3 | [T111] Sprint Retrospective Sprint 4 - Analisis final del proceso y lecciones aprendidas | 0.19d | 2026-04-30 09:30 | 2026-04-30 11:00 | 142 |  | Equipo |
| 144 | 1.4.6 | **CIERRE - Actividades de cierre del sprint** | 0.12d | 2026-04-30 11:00 | 2026-04-30 13:00 |  | start no earlier than 2026-04-18 15:30 |  |
| 145 | 1.4.6.1 | [T112] Identificacion de lecciones aprendidas y cierre del proyecto | 0.12d | 2026-04-30 11:00 | 2026-04-30 13:00 | 143 |  | Equipo |

Notes:
- 129: Owner: Juan Jose Forero / Hrs originales: 5
- 130: Owner: Andres Santiago Daza / Hrs originales: 7
- 131: Owner: Anthony Alejandro Gonzalez / Hrs originales: 7
- 132: Owner: Harold Ricardo Alvarado / Hrs originales: 4
- 133: Owner: Juan Jose Forero / Hrs originales: 4
- 135: Owner: Andres Santiago Daza / Hrs originales: 5
- 136: Owner: Juan Jose Forero / Hrs originales: 7
- 137: Owner: Anthony Alejandro Gonzalez / Hrs originales: 7
- 138: Owner: Harold Ricardo Alvarado / Hrs originales: 4
- 139: Owner: Andres Santiago Daza / Hrs originales: 4
- 141: Owner: Equipo / Hrs originales: 5
- 142: Owner: Equipo / Hrs originales: 2
- 143: Owner: Equipo / Hrs originales: 1.5
- 145: Owner: Equipo / Hrs originales: 1
